# SUNI

Schedule from ProjectLibre, 2016-04-04 to 2016-08-17.

## Calendars

- Standard: Mon-Fri 08:00-12:00, 13:00-17:00; Sat-Sun off.

## Resources

| Resource |
| --- |
| Unassigned |

## Schedule

| ID | WBS | Task | Duration | Start | Finish | Predecessors | Total slack | Constraint |
| --- | --- | --- | --- | --- | --- | --- | --- | --- |
| 1 | 1 | **Solicitudes** | 85d? | 2016-04-04 | 2016-07-29 |  |  | start no earlier than 2016-04-04 |
| 2 | 1.1 | **Versiones de solicitud** | 18d | 2016-04-04 | 2016-04-27 |  | 600d |  |
| 3 | 1.1.1 | EAV para la base de datos | 1d | 2016-04-04 | 2016-04-04 |  | 600d |  |
| 4 | 1.1.2 | Base de datos para solicitudes | 2d | 2016-04-05 | 2016-04-06 | 3 | 600d |  |
| 5 | 1.1.3 | Modelos para las versiones | 3d | 2016-04-07 | 2016-04-11 | 4 | 600d | start no earlier than 2016-04-07 |
| 6 | 1.1.4 | Test para los modelos | 1d | 2016-04-12 | 2016-04-12 | 5 | 600d |  |
| 7 | 1.1.5 | Controladores para las versiones | 5d | 2016-04-13 | 2016-04-19 | 6 | 600d |  |
| 8 | 1.1.6 | Test para el controlador | 1d | 2016-04-20 | 2016-04-20 | 7 | 1100d |  |
| 9 | 1.1.7 | Interfaz para las versiones | 5d | 2016-04-20 | 2016-04-26 | 7 | 600d | start no earlier than 2016-04-20 |
| 10 | 1.1.8 | Test para la interfaz del versionador | 1d | 2016-04-27 | 2016-04-27 | 9 | 600d |  |
| 11 | 1.2 | **Formulario de solicitudes** | 52d? | 2016-04-28 | 2016-07-08 | 2 |  |  |
| 12 | 1.2.1 | Base de datos para solicitudes | 1d | 2016-04-28 | 2016-04-28 | 2 | 600d | start no earlier than 2016-04-26 |
| 13 | 1.2.2 | Modelos para las solicitudes | 3d | 2016-04-29 | 2016-05-03 | 12 | 600d |  |
| 14 | 1.2.3 | Test para modelo de solicitud | 1d | 2016-05-04 | 2016-05-04 | 13 | 600d |  |
| 15 | 1.2.4 | Controlador para el formulario de solicitud | 4d | 2016-05-05 | 2016-05-10 | 14 | 600d |  |
| 16 | 1.2.5 | Test para el controlador del formulari | 2d | 2016-05-11 | 2016-05-12 | 15 | 600d |  |
| 17 | 1.2.6 | Interfaz de solicitudes | 6d | 2016-05-12 | 2016-05-19 | 16FS-1d | 600d |  |
| 18 | 1.2.7 | Pruebas con interfaz en servidor local | 1d | 2016-05-20 | 2016-05-20 | 17 | 600d |  |
| 19 | 1.2.8 | Corrección del bug en controlador de solicitudes | 3d | 2016-05-23 | 2016-05-25 | 18 | 600d |  |
| 20 | 1.2.9 | **Herramienta de migración** | 23d? | 2016-05-26 | 2016-06-27 | 19 |  |  |
| 21 | 1.2.9.1 | Creación de herramienta de migración para solicitudes | 8d | 2016-05-26 | 2016-06-06 |  | 600d |  |
| 22 | 1.2.9.2 | Pruebas de migración de solicitudes | 1d | 2016-06-06 | 2016-06-06 | 21FS-1d | 600d |  |
| 23 | 1.2.9.3 | Migración de solicitudes | 6d | 2016-06-07 | 2016-06-14 | 22 | 600d |  |
| 24 | 1.2.9.4 | Corrección de la migración | 3d | 2016-06-15 | 2016-06-17 | 23 | 600d |  |
| 25 | 1.2.9.5 | Corrección a la interfaz de solicitudes | 1d? | 2016-06-27 | 2016-06-27 | 33 |  |  |
| 26 | 1.2.10 | Nueva interfaz para solicitudes | 9d | 2016-06-28 | 2016-07-08 | 20 |  |  |

Notes:
- 15: Recordar que pueden tener más de una solicitud.

| ID | WBS | Task | Duration | Start | Finish | Predecessors | Total slack | Constraint |
| --- | --- | --- | --- | --- | --- | --- | --- | --- |
| 27 | 1.3 | **Informe de solicitudes** | 15d | 2016-07-11 | 2016-07-29 | 11 |  |  |
| 28 | 1.3.1 | Modelo para creación de solicitudes | 3d | 2016-07-11 | 2016-07-13 |  |  |  |
| 29 | 1.3.2 | Controlador para informe de solicitudes | 5d | 2016-07-14 | 2016-07-20 | 28 |  |  |
| 30 | 1.3.3 | Análisis sobre herramientas de exportación | 2d | 2016-07-14 | 2016-07-15 | 28 | 1000d |  |
| 31 | 1.3.4 | Actualización de controladores NBF | 2d | 2016-07-21 | 2016-07-22 | 29 |  |  |
| 32 | 1.3.5 | Interfaz para informes de solicitud | 5d | 2016-07-25 | 2016-07-29 | 31 |  |  |
| 33 | 2 | Creación de informe de escuelas capacitadas | 5d | 2016-06-20 | 2016-06-24 |  |  | start no earlier than 2016-06-20 |
| 34 | 3 | **Cooperantes** | 13d? | 2016-08-01 | 2016-08-17 | 1 |  |  |
| 35 | 3.1 | **Hub de cooperantes** | 10d | 2016-08-01 | 2016-08-12 |  |  |  |
| 36 | 3.1.1 | Modelo para cooperantes | 2d | 2016-08-01 | 2016-08-02 |  |  |  |
| 37 | 3.1.2 | Test del modelo de cooperantes | 1d | 2016-08-03 | 2016-08-03 | 36 | 700d |  |
| 38 | 3.1.3 | Controlador de cooperantes | 3d | 2016-08-03 | 2016-08-05 | 36 |  |  |
| 39 | 3.1.4 | Test para el controlador de cooperantes | 2d | 2016-08-08 | 2016-08-09 | 38 |  |  |
| 40 | 3.1.5 | Vista para cooperantes | 3d | 2016-08-10 | 2016-08-12 | 39 |  |  |
| 41 | 3.2 | **Asignación de cooperantes** | 3d? | 2016-08-15 | 2016-08-17 | 35 |  |  |
| 42 | 3.2.1 | Modelos para asignación | 1d? | 2016-08-15 | 2016-08-15 |  |  |  |
| 43 | 3.2.2 | Test para el modelo de asignación | 1d? | 2016-08-16 | 2016-08-16 | 42 | 100d |  |
| 44 | 3.2.3 | Controlador para asignación de cooperantes | 1d? | 2016-08-16 | 2016-08-16 | 42 |  |  |
| 45 | 3.2.4 | Test del controlador de asignación | 1d? | 2016-08-17 | 2016-08-17 | 44 |  |  |

Notes:
- 42: Para la tabla de asignaciones, no de cooperantes.
- 44: Recordar que debe cambiar el estado del proceso
